# 陆缆及气象站施工

Schedule from a web Gantt chart, 2025-12-17 to 2025-12-28.
Every day is a working day

## Schedule

| ID | WBS | Task | Duration | Start | Finish | Predecessors | Status |
| --- | --- | --- | --- | --- | --- | --- | --- |
| 2 | 1 | **陆缆** | 12d | 2025-12-17 | 2025-12-28 |  |  |
| 3 | 1.1 | **5-8号井、27号井** | 5d | 2025-12-18 | 2025-12-22 |  |  |
| 4 | 1.1.1 | 土方开挖及混凝土垫层浇筑 | 1d | 2025-12-18 | 2025-12-18 |  |  |
| 5 | 1.1.2 | 底模钢筋模板支设 | 1d | 2025-12-19 | 2025-12-19 | 4 | waiting |
| 6 | 1.1.3 | 底模浇筑 | 1d | 2025-12-20 | 2025-12-20 | 5 | waiting |
| 7 | 1.1.4 | 井身钢筋模板支设 | 1d | 2025-12-21 | 2025-12-21 | 6 | waiting |
| 8 | 1.1.5 | 井身浇筑 | 1d | 2025-12-22 | 2025-12-22 | 7 | waiting |
| 9 | 1.2 | **1-4号井** | 5d | 2025-12-24 | 2025-12-28 |  |  |
| 10 | 1.2.1 | 土方开挖及混凝土垫层浇筑 | 1d | 2025-12-24 | 2025-12-24 |  |  |
| 11 | 1.2.2 | 底模钢筋模板支设 | 1d | 2025-12-25 | 2025-12-25 | 10 | waiting |
| 12 | 1.2.3 | 底模浇筑 | 1d | 2025-12-26 | 2025-12-26 | 11 | waiting |
| 13 | 1.2.4 | 井身钢筋模板支设 | 1d | 2025-12-27 | 2025-12-27 | 12 | waiting |
| 14 | 1.2.5 | 井身浇筑 | 1d | 2025-12-28 | 2025-12-28 | 13 | waiting |
| 15 | 1.3 | **9-14号井** | 3d | 2025-12-18 | 2025-12-20 |  |  |
| 16 | 1.3.1 | 底模浇筑 | 1d | 2025-12-18 | 2025-12-18 |  |  |
| 17 | 1.3.2 | 井身钢筋模板支设 | 1d | 2025-12-19 | 2025-12-19 | 16 | waiting |
| 18 | 1.3.3 | 井身浇筑 | 1d | 2025-12-20 | 2025-12-20 | 17 | waiting |
| 19 | 1.4 | **15-18号井** | 2d | 2025-12-17 | 2025-12-18 |  |  |
| 20 | 1.4.1 | 井身钢筋模板支设 | 1d | 2025-12-17 | 2025-12-17 |  |  |
| 21 | 1.4.2 | 井身浇筑 | 1d | 2025-12-18 | 2025-12-18 | 20 | waiting |
| 22 | 1.5 | 19-26号井（已完成） | 1d | 2025-12-17 | 2025-12-17 |  |  |
| 23 | 1.6 | 28-31号井（已完成） | 1d | 2025-12-17 | 2025-12-17 |  |  |
| 24 | 1.7 | **32-36号井** | 1d | 2025-12-18 | 2025-12-18 |  |  |
| 25 | 1.7.1 | 井身浇筑 | 1d | 2025-12-18 | 2025-12-18 |  |  |

| ID | WBS | Task | Duration | Start | Finish | Predecessors | Status |
| --- | --- | --- | --- | --- | --- | --- | --- |
| 26 | 2 | **气象站** | 12d | 2025-12-17 | 2025-12-28 |  |  |
| 27 | 2.1 | **挡土墙** | 6d | 2025-12-17 | 2025-12-22 |  |  |
| 28 | 2.1.1 | 挡土墙砌筑 | 3d | 2025-12-17 | 2025-12-19 |  |  |
| 29 | 2.1.2 | 挡土墙土方回填 | 1d | 2025-12-22 | 2025-12-22 |  |  |
| 30 | 2.2 | **气象站基础** | 4d | 2025-12-23 | 2025-12-26 |  |  |
| 31 | 2.2.1 | 基础开挖回填及垫层浇筑 | 1d | 2025-12-23 | 2025-12-23 | 29 | waiting |
| 32 | 2.2.2 | 基础钢筋模板 | 2d | 2025-12-24 | 2025-12-25 | 31 | waiting |
| 33 | 2.2.3 | 基础浇筑 | 1d | 2025-12-26 | 2025-12-26 | 32 | waiting |
| 34 | 2.3 | 栅栏安装 | 2d | 2025-12-27 | 2025-12-28 | 33 | waiting |
